# Tutorial2_2

Schedule from MS Project, 2019-05-06 to 2019-09-27, costs in ¥.

## Calendars

- 标准: Mon-Fri 08:00-12:00, 13:00-17:00; Sat-Sun off.

## Resources

| Resource | Rate |
| --- | --- |
| Belinda | 30 |
| Tom | 35 |
| Daisy | 40 |
| Gavin | 45 |
| Purdy | 50 |
| Justin | 55 |
| Spencer | 60 |
| Amanda | 65 |

## Schedule

| ID | Task | Duration | Start | Finish | Predecessors | Baseline start | Baseline finish | Baseline duration | Baseline 1 finish | Total slack | Free slack | Constraint | Resources | Work | Cost |
| --- | --- | --- | --- | --- | --- | --- | --- | --- | --- | --- | --- | --- | --- | --- | --- |
| 1 | IoE/P/1 specify overall design | 35d | 2019-05-06 | 2019-06-21 |  | 2019-04-26 | 2019-06-14 | 0d | 2019-06-14 | 0d |  | start no earlier than 2019-05-06 | Amanda | 280h | 18,200 |
| 2 | IoE/P/2 specify module A | 20d | 2019-06-24 | 2019-07-19 | 1 | 2019-06-15 | 2019-07-20 | 0d | 2019-07-20 | 5d |  |  | Daisy | 160h | 6,400 |
| 3 | IoE/P/3 specify module B | 15d | 2019-06-24 | 2019-07-12 | 1 | 2019-06-15 | 2019-07-02 | 0d | 2019-07-02 | 10d |  |  | Belinda | 120h | 3,600 |
| 4 | IoE/P/4 specify module C | 25d | 2019-06-24 | 2019-07-26 | 1 | 2019-06-15 | 2019-07-16 | 0d | 2019-07-16 | 0d |  |  | Belinda | 200h | 6,000 |
| 5 | IoE/P/5 specify module D | 15d | 2019-06-24 | 2019-07-12 | 1 | 2019-06-15 | 2019-07-13 | 0d | 2019-07-13 | 10d |  |  | Tom | 120h | 4,200 |
| 6 | IoE/P/6 check specifications | 2d | 2019-07-29 | 2019-07-30 | 2, 3, 4, 5 | 2019-07-21 | 2019-07-24 | 0d | 2019-07-24 | 0d |  |  | Amanda | 16h | 1,040 |
| 7 | IoE/P/7 specify design module A | 7d | 2019-07-31 | 2019-08-08 | 6 | 2019-07-25 | 2019-07-30 | 0d | 2019-07-30 | 0d |  |  | Daisy | 56h | 2,240 |
| 8 | IoE/P/8 specify design module B | 6d | 2019-07-31 | 2019-08-07 | 6 | 2019-07-25 | 2019-07-30 | 0d | 2019-07-30 | 3d | 0d |  | Tom | 48h | 1,680 |
| 9 | IoE/P/9 specify design module C | 4d | 2019-07-31 | 2019-08-05 | 6 | 2019-07-25 | 2019-07-27 | 0d | 2019-07-27 | 18d | 0d |  | Belinda | 32h | 960 |
| 10 | IoE/P/10 specify design module D | 4d | 2019-07-31 | 2019-08-05 | 6 | 2019-07-25 | 2019-07-24 | 0d | 2019-07-24 | 8d | 0d |  | Tom | 32h | 1,120 |
| 11 | IoE/P/11 code/test module A | 30d | 2019-08-09 | 2019-09-19 | 7 | 2019-08-01 | 2019-09-11 | 0d | 2019-09-11 | 0d |  |  | Gavin | 240h | 10,800 |
| 12 | IoE/P/12 code/test module B | 28d | 2019-08-08 | 2019-09-16 | 8 | 2019-07-31 | 2019-09-08 | 0d | 2019-09-08 | 3d |  |  | Purdy | 224h | 11,200 |
| 13 | IoE/P/13 code/test module C | 15d | 2019-08-06 | 2019-08-26 | 9 | 2019-07-29 | 2019-08-17 | 0d | 2019-08-17 | 18d |  |  | Justin | 120h | 6,600 |
| 14 | IoE/P/14 code/test module D | 25d | 2019-08-06 | 2019-09-09 | 10 | 2019-07-29 | 2019-08-30 | 0d | 2019-08-30 | 8d |  |  | Spencer | 200h | 12,000 |
| 15 | IoE/P/15 system integration | 6d | 2019-09-20 | 2019-09-27 | 11, 12, 13, 14 | 2019-09-12 | 2019-09-18 | 0d | 2019-09-18 | 0d |  |  | Belinda | 48h | 1,440 |
